# HRPortal

Schedule from MS Project, 2019-12-02 to 2020-06-09.
ISTRetail
This project’s main goal is to help our client overcome these difficulties: modify employees’ / personal information, manage the holiday’s process, manage the training process and / guarantee a timely communication of corporate information.
This projects main goal is to help our client overcome these difficulties: modify employees/ personal information, manage the holidays process, manage the training process and / guarantee a timely communication of corporate information.

## Calendars

- Project Calendar: Mon-Fri 08:00-12:00, 13:00-17:00; Sat-Sun off. Exceptions (off unless hours are given): 2019-12-24 (Véspera de natal), 2019-12-25 (Dia de Natal), 2020-01-01 (Dia de Ano Novo), 2020-04-10 (Dia de Páscoa), 2020-04-25 (Dia da Liberdade), 2020-05-01 (Dia do Trabalhador).

## Schedule

| ID | WBS | Task | Type | Duration | Start | Finish | Predecessors | Total slack | Constraint |
| --- | --- | --- | --- | --- | --- | --- | --- | --- | --- |
| 1 | 1 | **Project Management** |  | 77d | 2019-12-02 | 2020-03-20 |  | 0d |  |
| 2 | 1.1 | **Initiation** |  | 3d | 2019-12-02 | 2019-12-04 |  | 0d |  |
| 3 | 1.1.1 | Review Project Charter |  | 1d | 2019-12-02 | 2019-12-02 |  | 0d |  |
| 4 | 1.1.2 | Review Stakeholders Identification |  | 1d | 2019-12-03 | 2019-12-03 | 3 | 0d |  |
| 5 | 1.1.3 | Establish Project Team |  | 1d | 2019-12-04 | 2019-12-04 | 4 | 0d |  |
| 6 | 1.1.4 | Project Started | milestone | 0d | 2019-12-04 | 2019-12-04 | 5 | 0d |  |
| 7 | 1.2 | **Planning** |  | 5d | 2019-12-05 | 2019-12-11 |  | 0d |  |
| 8 | 1.2.1 | Review Project Scope and Time |  | 1d | 2019-12-05 | 2019-12-05 | 6 | 0d |  |
| 9 | 1.2.2 | Define Project Organization |  | 1d | 2019-12-06 | 2019-12-06 | 8 | 0d |  |
| 10 | 1.2.3 | Define communication plan |  | 1d | 2019-12-09 | 2019-12-09 | 9 | 0d |  |
| 11 | 1.2.4 | Review project Plan |  | 1d | 2019-12-10 | 2019-12-10 | 10 | 0d |  |
| 12 | 1.2.5 | Kick-off meeting |  | 1d | 2019-12-11 | 2019-12-11 | 11 | 0d |  |
| 13 | 1.2.6 | Project Plan Approved | milestone | 0d | 2019-12-11 | 2019-12-11 | 12 | 0d |  |
| 14 | 1.3 | **Control** |  | 46d | 2020-01-10 | 2020-03-13 |  | 60d |  |
| 15 | 1.3.1 | Control 1 |  | 1d | 2020-01-10 | 2020-01-10 |  | 105d | start no earlier than 2020-01-10 |
| 16 | 1.3.2 | Control 2 |  | 1d | 2020-01-17 | 2020-01-17 |  | 100d | start no earlier than 2020-01-17 |
| 17 | 1.3.3 | Control 3 |  | 1d | 2020-01-24 | 2020-01-24 |  | 95d | start no earlier than 2020-01-24 |
| 18 | 1.3.4 | Control 4 |  | 1d | 2020-01-31 | 2020-01-31 |  | 90d | start no earlier than 2020-01-31 |
| 19 | 1.3.5 | Control 5 |  | 1d | 2020-02-07 | 2020-02-07 |  | 85d | start no earlier than 2020-02-07 |
| 20 | 1.3.6 | Control 6 |  | 1d | 2020-02-14 | 2020-02-14 |  | 80d | start no earlier than 2020-02-14 |
| 21 | 1.3.7 | Control 7 |  | 1d | 2020-02-21 | 2020-02-21 |  | 75d | start no earlier than 2020-02-21 |
| 22 | 1.3.8 | Control 8 |  | 1d | 2020-02-28 | 2020-02-28 |  | 70d | start no earlier than 2020-02-28 |
| 23 | 1.3.9 | Control 9 |  | 1d | 2020-03-06 | 2020-03-06 |  | 65d | start no earlier than 2020-03-06 |
| 24 | 1.3.10 | Control 10 |  | 1d | 2020-03-13 | 2020-03-13 |  | 60d | start no earlier than 2020-03-13 |

| ID | WBS | Task | Type | Duration | Start | Finish | Predecessors | Total slack | Free slack |
| --- | --- | --- | --- | --- | --- | --- | --- | --- | --- |
| 25 | 1.4 | **Close** |  | 5d | 2020-03-16 | 2020-03-20 |  | 55d |  |
| 26 | 1.4.1 | Review project objectives |  | 2d | 2020-03-16 | 2020-03-17 | 110 | 55d | 0d |
| 27 | 1.4.2 | Collect Lessons Learned |  | 1d | 2020-03-18 | 2020-03-18 | 26 | 55d | 0d |
| 28 | 1.4.3 | Provide Feedback |  | 1d | 2020-03-19 | 2020-03-19 | 27 | 55d | 0d |
| 29 | 1.4.4 | Close contracts |  | 1d | 2020-03-20 | 2020-03-20 | 28 | 55d | 0d |
| 30 | 1.4.5 | Project Closed | milestone | 0d | 2020-03-20 | 2020-03-20 | 29 | 55d |  |
| 31 | 2 | **Analysis** |  | 10d | 2019-12-12 | 2019-12-27 |  | 0d |  |
| 32 | 2.1 | **Analysis Asls** |  | 4d | 2019-12-12 | 2019-12-17 |  | 0d |  |
| 33 | 2.1.1 | Survey employees register query and update process |  | 1d | 2019-12-12 | 2019-12-12 | 13 | 0d |  |
| 34 | 2.1.2 | Survey training management process |  | 1d | 2019-12-13 | 2019-12-13 | 33 | 0d |  |
| 35 | 2.1.3 | Survey holidays and absences management |  | 1d | 2019-12-16 | 2019-12-16 | 34 | 0d |  |
| 36 | 2.1.4 | Survey communication of corporate information |  | 1d | 2019-12-17 | 2019-12-17 | 35 | 0d |  |
| 37 | 2.1.5 | Analysis Completed | milestone | 0d | 2019-12-17 | 2019-12-17 | 36 | 0d |  |
| 38 | 2.2 | **Analysis ToBe** |  | 6d | 2019-12-18 | 2019-12-27 |  | 0d |  |
| 39 | 2.2.1 | Survey stakeholders |  | 2d | 2019-12-18 | 2019-12-19 | 37 | 0d |  |
| 40 | 2.2.2 | **Requirement Specification** |  | 3d | 2019-12-20 | 2019-12-26 |  | 0d |  |
| 41 | 2.2.2.1 | Functional |  | 1d | 2019-12-20 | 2019-12-20 | 39 | 0d |  |
| 42 | 2.2.2.2 | Technical |  | 1d | 2019-12-23 | 2019-12-23 | 41 | 0d |  |
| 43 | 2.2.2.3 | Hardware |  | 1d | 2019-12-26 | 2019-12-26 | 42 | 0d |  |
| 44 | 2.2.3 | Approve requirements |  | 1d | 2019-12-27 | 2019-12-27 | 43 | 0d |  |
| 45 | 2.2.4 | Analysis Approved | milestone | 0d | 2019-12-27 | 2019-12-27 | 44 | 0d |  |
| 46 | 3 | **Design** |  | 5d | 2019-12-30 | 2020-01-06 |  | 0d |  |
| 47 | 3.1 | **Design Interface** |  | 3d | 2019-12-30 | 2020-01-02 |  | 0d |  |
| 48 | 3.1.1 | Learn legacy system functionalities and behaviour |  | 1d | 2019-12-30 | 2019-12-30 | 45 | 0d |  |
| 49 | 3.1.2 | Design an interface(protoype) that enables communication between framework and legacy system |  | 1d | 2019-12-31 | 2019-12-31 | 48 | 0d |  |
| 50 | 3.1.3 | Receive feedback on the prototype |  | 1d | 2020-01-02 | 2020-01-02 | 49 | 0d |  |
| 51 | 3.1.4 | Correct nonconformitites |  | 1d | 2020-01-02 | 2020-01-02 | 50FF | 0d |  |
| 52 | 3.1.5 | Interface Design Completed | milestone | 0d | 2020-01-02 | 2020-01-02 | 51 | 0d |  |

| ID | WBS | Task | Type | Duration | Start | Finish | Predecessors | Total slack | Free slack |
| --- | --- | --- | --- | --- | --- | --- | --- | --- | --- |
| 53 | 3.2 | **Test Specification** |  | 2d | 2020-01-03 | 2020-01-06 |  | 0d |  |
| 54 | 3.2.1 | Specify integration tests |  | 1d | 2020-01-03 | 2020-01-03 | 52 | 0d |  |
| 55 | 3.2.2 | Specify system tests |  | 1d | 2020-01-03 | 2020-01-03 | 54SS | 0d |  |
| 56 | 3.2.3 | Specify acceptance tests |  | 1d | 2020-01-06 | 2020-01-06 | 55 | 0d |  |
| 57 | 3.2.4 | Test Specification Completed | milestone | 0d | 2020-01-06 | 2020-01-06 | 56, 54 | 0d |  |
| 58 | 4 | **Realization** |  | 36d | 2020-01-07 | 2020-02-25 |  | 0d |  |
| 59 | 4.1 | **Employees Register Module** |  | 5d | 2020-01-07 | 2020-01-13 |  | 1d |  |
| 60 | 4.1.1 | Parametrization |  | 1d | 2020-01-07 | 2020-01-07 | 57 | 1d | 0d |
| 61 | 4.1.2 | Define profiles and respective privileges |  | 2d | 2020-01-08 | 2020-01-09 | 60 | 1d | 0d |
| 62 | 4.1.3 | Fulfill requirements |  | 2d | 2020-01-10 | 2020-01-13 | 61 | 1d | 0d |
| 63 | 4.1.4 | Employees Register Module completed | milestone | 0d | 2020-01-13 | 2020-01-13 | 62 | 1d | 0d |
| 64 | 4.2 | **Holidays and Absences Module** |  | 10d | 2020-01-14 | 2020-01-27 |  | 1d |  |
| 65 | 4.2.1 | Parametrization |  | 2d | 2020-01-14 | 2020-01-15 | 63 | 1d | 0d |
| 66 | 4.2.2 | Define profiles and respective privileges |  | 4d | 2020-01-16 | 2020-01-21 | 65 | 1d | 0d |
| 67 | 4.2.3 | Fulfill requirements |  | 4d | 2020-01-22 | 2020-01-27 | 66 | 1d | 0d |
| 68 | 4.2.4 | Holidays and absences Module completed | milestone | 0d | 2020-01-27 | 2020-01-27 | 67 | 1d | 0d |
| 69 | 4.3 | **Training Management Module** |  | 10d | 2020-01-28 | 2020-02-10 |  | 1d |  |
| 70 | 4.3.1 | Parametrization |  | 1d | 2020-01-28 | 2020-01-28 | 68 | 1d | 0d |
| 71 | 4.3.2 | Create scripts for data migration |  | 4d | 2020-01-29 | 2020-02-03 | 70 | 1d | 0d |
| 72 | 4.3.3 | Define profiles and respective privileges |  | 2d | 2020-02-04 | 2020-02-05 | 71 | 1d | 0d |
| 73 | 4.3.4 | Fulfill requirements |  | 3d | 2020-02-06 | 2020-02-10 | 72 | 1d | 0d |
| 74 | 4.3.5 | Training Management Module completed | milestone | 0d | 2020-02-10 | 2020-02-10 | 73 | 1d | 0d |
| 75 | 4.4 | **Corporate Information Module** |  | 31d | 2020-01-07 | 2020-02-18 |  | 0d |  |
| 76 | 4.4.1 | Create backlog |  | 1d | 2020-01-07 | 2020-01-07 | 57 | 0d |  |

| ID | WBS | Task | Type | Duration | Start | Finish | Predecessors | Total slack | Free slack |
| --- | --- | --- | --- | --- | --- | --- | --- | --- | --- |
| 77 | 4.4.2 | **Sprint 1** |  | 10d | 2020-01-08 | 2020-01-21 |  | 0d |  |
| 78 | 4.4.2.1 | Plan |  | 1d | 2020-01-08 | 2020-01-08 | 76 | 0d |  |
| 79 | 4.4.2.2 | Execute work |  | 8d | 2020-01-09 | 2020-01-20 | 78 | 0d |  |
| 80 | 4.4.2.3 | Review |  | 1d | 2020-01-21 | 2020-01-21 | 79 | 0d |  |
| 81 | 4.4.2.4 | Sprint concluded | milestone | 0d | 2020-01-21 | 2020-01-21 | 80 | 0d |  |
| 82 | 4.4.3 | **Sprint 2** |  | 10d | 2020-01-22 | 2020-02-04 |  | 0d |  |
| 83 | 4.4.3.1 | Plan |  | 1d | 2020-01-22 | 2020-01-22 | 81 | 0d |  |
| 84 | 4.4.3.2 | Execute work |  | 8d | 2020-01-23 | 2020-02-03 | 83 | 0d |  |
| 85 | 4.4.3.3 | Review |  | 1d | 2020-02-04 | 2020-02-04 | 84 | 0d |  |
| 86 | 4.4.3.4 | Sprint concluded | milestone | 0d | 2020-02-04 | 2020-02-04 | 85 | 0d |  |
| 87 | 4.4.4 | **Sprint 3** |  | 10d | 2020-02-05 | 2020-02-18 |  | 0d |  |
| 88 | 4.4.4.1 | Plan |  | 1d | 2020-02-05 | 2020-02-05 | 86 | 0d |  |
| 89 | 4.4.4.2 | Execute work |  | 8d | 2020-02-06 | 2020-02-17 | 88 | 0d |  |
| 90 | 4.4.4.3 | Review |  | 1d | 2020-02-18 | 2020-02-18 | 89 | 0d |  |
| 91 | 4.4.4.4 | Sprint concluded | milestone | 0d | 2020-02-18 | 2020-02-18 | 90 | 0d |  |
| 92 | 4.4.5 | Corporate Information Module completed | milestone | 0d | 2020-02-18 | 2020-02-18 | 91 | 0d |  |
| 93 | 4.5 | **Interface Implementation** |  | 5d | 2020-02-11 | 2020-02-17 |  | 1d |  |
| 94 | 4.5.1 | Implement the interface according to the requirements |  | 4d | 2020-02-11 | 2020-02-14 | 74 | 1d | 0d |
| 95 | 4.5.2 | Review interface |  | 1d | 2020-02-17 | 2020-02-17 | 94 | 1d | 0d |
| 96 | 4.5.3 | Interface implemented | milestone | 0d | 2020-02-17 | 2020-02-17 | 95 | 1d |  |
| 97 | 4.6 | **Integration Tests** |  | 5d | 2020-02-19 | 2020-02-25 |  | 0d |  |
| 98 | 4.6.1 | Execute Tests |  | 5d | 2020-02-19 | 2020-02-25 | 92, 74, 96 | 0d |  |
| 99 | 4.6.2 | Correct nonconformities |  | 5d | 2020-02-19 | 2020-02-25 | 98FF | 0d |  |
| 100 | 4.6.3 | Integration Tests Completed | milestone | 0d | 2020-02-25 | 2020-02-25 | 99 | 0d |  |

| ID | WBS | Task | Type | Duration | Start | Finish | Predecessors | Total slack |
| --- | --- | --- | --- | --- | --- | --- | --- | --- |
| 101 | 5 | **Transition** |  | 13d | 2020-02-26 | 2020-03-13 |  | 0d |
| 102 | 5.1 | **Training** |  | 1d | 2020-03-06 | 2020-03-06 |  | 0d |
| 103 | 5.1.1 | Train SID employees |  | 1d | 2020-03-06 | 2020-03-06 | 114 | 0d |
| 104 | 5.1.2 | Train HRD employees |  | 1d | 2020-03-06 | 2020-03-06 | 103SS | 0d |
| 105 | 5.1.3 | Provide technical documentation |  | 1d | 2020-03-06 | 2020-03-06 | 103SS, 104SS | 0d |
| 106 | 5.1.4 | Training completed | milestone | 0d | 2020-03-06 | 2020-03-06 | 105, 103, 104 | 0d |
| 107 | 5.2 | **Acceptance Tests** |  | 5d | 2020-03-09 | 2020-03-13 |  | 0d |
| 108 | 5.2.1 | Realize tests |  | 5d | 2020-03-09 | 2020-03-13 | 106 | 0d |
| 109 | 5.2.2 | Correct nonconformities |  | 5d | 2020-03-09 | 2020-03-13 | 108FF | 0d |
| 110 | 5.2.3 | System accepted | milestone | 0d | 2020-03-13 | 2020-03-13 | 109 | 0d |
| 111 | 5.3 | **System Tests** |  | 5d | 2020-02-28 | 2020-03-05 |  | 0d |
| 112 | 5.3.1 | Execute tests |  | 5d | 2020-02-28 | 2020-03-05 | 118 | 0d |
| 113 | 5.3.2 | Correct nonconformities |  | 5d | 2020-02-28 | 2020-03-05 | 112FF | 0d |
| 114 | 5.3.3 | System tests completed | milestone | 0d | 2020-03-05 | 2020-03-05 | 113 | 0d |
| 115 | 5.4 | **Software Installation** |  | 2d | 2020-02-26 | 2020-02-27 |  | 0d |
| 116 | 5.4.1 | Prepare all the necessary hardware |  | 1d | 2020-02-26 | 2020-02-26 | 100 | 0d |
| 117 | 5.4.2 | Install all the required software for the information system to work properly |  | 1d | 2020-02-27 | 2020-02-27 | 116 | 0d |
| 118 | 5.4.3 | Software installed | milestone | 0d | 2020-02-27 | 2020-02-27 | 117 | 0d |
| 119 | 6 | **Operation** |  | 60d | 2020-03-16 | 2020-06-09 |  | 0d |
| 120 | 6.1 | **Warranty** |  | 60d | 2020-03-16 | 2020-06-09 |  | 0d |
| 121 | 6.1.1 | Correct problems or nonconformities that might appear |  | 60d | 2020-03-16 | 2020-06-09 | 110 | 0d |
