# HRPortal

Schedule from MS Project, 2019-12-02 to 2020-06-17, costs in €.
ISTRetail
This project’s main goal is to help our client overcome these difficulties: modify employees’ / personal information, manage the holiday’s process, manage the training process and / guarantee a timely communication of corporate information.
This projects main goal is to help our client overcome these difficulties: modify employees/ personal information, manage the holidays process, manage the training process and / guarantee a timely communication of corporate information.

## Calendars

- Project Calendar: Mon-Fri 08:00-12:00, 13:00-17:00; Sat-Sun off. Exceptions (off unless hours are given): 2019-12-24 (Véspera de natal), 2019-12-25 (Dia de Natal), 2019-12-26 to 2019-12-31 (Non working days), 2020-01-01 (Dia de Ano Novo), 2020-04-10 (Dia de Páscoa), 2020-04-25 (Dia da Liberdade), 2020-05-01 (Dia do Trabalhador), 2020-06-10 (Dia de Portugal).

## Resources

| Resource | Rate |
| --- | --- |
| Project Owner |  |
| Project Sponsor |  |
| SID Director |  |
| ISTRetail Project Manager |  |
| HRD Delegate |  |
| HRD Specialist 3 |  |
| IT Technical Coordinator |  |
| IT Trainee |  |
| IT Specialist |  |
| Project Manager | 43.75 |
| Technical Coordinator | 31.25 |
| Technical Consultant 2 | 25 |
| Scrum Master | 31.25 |
| Scrum Consultant 2 | 25 |
| Technical Trainee | 12.5 |
| HRD Specialist 2 |  |
| HRD Specialist 1 |  |
| Technical Consultant 1 | 25 |
| Scrum Consultant 1 | 25 |

## Schedule

| ID | WBS | Task | Type | Duration | Start | Finish | Predecessors | Total slack | Constraint | Resources | Work | Cost |
| --- | --- | --- | --- | --- | --- | --- | --- | --- | --- | --- | --- | --- |
| 1 | 1 | **Project Management** |  | 78d | 2019-12-02 | 2020-03-27 |  | 0d |  |  | 412h | 8,050 |
| 2 | 1.1 | **Initiation** |  | 3d | 2019-12-02 | 2019-12-04 |  | 0d |  |  | 52h | 1,050 |
| 3 | 1.1.1 | Review Project Charter |  | 1d | 2019-12-02 | 2019-12-02 |  | 0d |  | Project Owner [50%]; ISTRetail Project Manager; Project Manager | 16h | 350 |
| 4 | 1.1.2 | Review Stakeholders Identification |  | 1d | 2019-12-03 | 2019-12-03 | 3 | 0d |  | Project Owner [50%]; ISTRetail Project Manager; Project Manager | 20h | 350 |
| 5 | 1.1.3 | Establish Project Team |  | 1d | 2019-12-04 | 2019-12-04 | 4 | 0d |  | ISTRetail Project Manager; Project Manager | 16h | 350 |
| 6 | 1.1.4 | Project Started | milestone | 0d | 2019-12-04 | 2019-12-04 | 5 | 0d |  |  |  |  |
| 7 | 1.2 | **Planning** |  | 5d | 2019-12-05 | 2019-12-11 |  | 0d |  |  | 112h | 1,750 |
| 8 | 1.2.1 | Review Project Scope and Time |  | 1d | 2019-12-05 | 2019-12-05 | 6 | 0d |  | Project Manager; Project Owner [50%]; ISTRetail Project Manager | 20h | 350 |
| 9 | 1.2.2 | Define Project Organization |  | 1d | 2019-12-06 | 2019-12-06 | 8 | 0d |  | Project Manager; ISTRetail Project Manager | 16h | 350 |
| 10 | 1.2.3 | Define communication plan |  | 1d | 2019-12-09 | 2019-12-09 | 9 | 0d |  | Project Manager; ISTRetail Project Manager | 16h | 350 |
| 11 | 1.2.4 | Review project Plan |  | 1d | 2019-12-10 | 2019-12-10 | 10 | 0d |  | Project Manager; Project Owner [50%]; ISTRetail Project Manager; Project Sponsor | 28h | 350 |
| 12 | 1.2.5 | Kick-off meeting |  | 1d | 2019-12-11 | 2019-12-11 | 11 | 0d |  | Project Manager; Project Owner [50%]; SID Director [50%]; ISTRetail Project Manager; HRD Delegate [50%]; IT Technical Coordinator [50%] | 32h | 350 |
| 13 | 1.2.6 | Project Plan Approved | milestone | 0d | 2019-12-11 | 2019-12-11 | 12 | 0d |  |  |  |  |
| 14 | 1.3 | **Control** |  | 46d | 2020-01-10 | 2020-03-13 | 13 | 65d |  |  | 160h | 3,500 |
| 15 | 1.3.1 | Control 1 |  | 1d | 2020-01-10 | 2020-01-10 |  | 110d | start no earlier than 2020-01-10 | ISTRetail Project Manager; Project Manager | 16h | 350 |
| 16 | 1.3.2 | Control 2 |  | 1d | 2020-01-17 | 2020-01-17 |  | 105d | start no earlier than 2020-01-17 | ISTRetail Project Manager; Project Manager | 16h | 350 |
| 17 | 1.3.3 | Control 3 |  | 1d | 2020-01-24 | 2020-01-24 |  | 100d | start no earlier than 2020-01-24 | ISTRetail Project Manager; Project Manager | 16h | 350 |
| 18 | 1.3.4 | Control 4 |  | 1d | 2020-01-31 | 2020-01-31 |  | 95d | start no earlier than 2020-01-31 | ISTRetail Project Manager; Project Manager | 16h | 350 |
| 19 | 1.3.5 | Control 5 |  | 1d | 2020-02-07 | 2020-02-07 |  | 90d | start no earlier than 2020-02-07 | ISTRetail Project Manager; Project Manager | 16h | 350 |
| 20 | 1.3.6 | Control 6 |  | 1d | 2020-02-14 | 2020-02-14 |  | 85d | start no earlier than 2020-02-14 | ISTRetail Project Manager; Project Manager | 16h | 350 |
| 21 | 1.3.7 | Control 7 |  | 1d | 2020-02-21 | 2020-02-21 |  | 80d | start no earlier than 2020-02-21 | ISTRetail Project Manager; Project Manager | 16h | 350 |
| 22 | 1.3.8 | Control 8 |  | 1d | 2020-02-28 | 2020-02-28 |  | 75d | start no earlier than 2020-02-28 | ISTRetail Project Manager; Project Manager | 16h | 350 |
| 23 | 1.3.9 | Control 9 |  | 1d | 2020-03-06 | 2020-03-06 |  | 70d | start no earlier than 2020-03-06 | ISTRetail Project Manager; Project Manager | 16h | 350 |
| 24 | 1.3.10 | Control 10 |  | 1d | 2020-03-13 | 2020-03-13 |  | 65d | start no earlier than 2020-03-13 | ISTRetail Project Manager; Project Manager | 16h | 350 |

| ID | WBS | Task | Type | Duration | Start | Finish | Predecessors | Total slack | Free slack | Resources | Work | Cost |
| --- | --- | --- | --- | --- | --- | --- | --- | --- | --- | --- | --- | --- |
| 25 | 1.4 | **Close** |  | 5d | 2020-03-23 | 2020-03-27 |  | 55d |  |  | 88h | 1,750 |
| 26 | 1.4.1 | Review project objectives |  | 2d | 2020-03-23 | 2020-03-24 | 111 | 55d | 0d | Project Owner [50%]; ISTRetail Project Manager; Project Manager | 40h | 700 |
| 27 | 1.4.2 | Collect Lessons Learned |  | 1d | 2020-03-25 | 2020-03-25 | 26 | 55d | 0d | Project Manager; ISTRetail Project Manager | 16h | 350 |
| 28 | 1.4.3 | Provide Feedback |  | 1d | 2020-03-26 | 2020-03-26 | 27 | 55d | 0d | Project Manager; ISTRetail Project Manager | 16h | 350 |
| 29 | 1.4.4 | Close contracts |  | 1d | 2020-03-27 | 2020-03-27 | 28 | 55d | 0d | ISTRetail Project Manager; Project Manager | 16h | 350 |
| 30 | 1.4.5 | Project Closed | milestone | 0d | 2020-03-27 | 2020-03-27 | 29 | 55d |  |  |  |  |
| 31 | 2 | **Analysis** |  | 10d | 2019-12-12 | 2020-01-03 |  | 0d |  |  | 184h | 2,050 |
| 32 | 2.1 | **Analysis Asls** |  | 4d | 2019-12-12 | 2019-12-17 |  | 0d |  |  | 64h | 1,000 |
| 33 | 2.1.1 | Survey employees register query and update process |  | 1d | 2019-12-12 | 2019-12-12 | 13 | 0d |  | Technical Coordinator; ISTRetail Project Manager | 16h | 250 |
| 34 | 2.1.2 | Survey training management process |  | 1d | 2019-12-13 | 2019-12-13 | 33 | 0d |  | Technical Coordinator; ISTRetail Project Manager | 16h | 250 |
| 35 | 2.1.3 | Survey holidays and absences management |  | 1d | 2019-12-16 | 2019-12-16 | 34 | 0d |  | Technical Coordinator; ISTRetail Project Manager | 16h | 250 |
| 36 | 2.1.4 | Survey communication of corporate information |  | 1d | 2019-12-17 | 2019-12-17 | 35 | 0d |  | Technical Coordinator; ISTRetail Project Manager | 16h | 250 |
| 37 | 2.1.5 | Analysis Completed | milestone | 0d | 2019-12-17 | 2019-12-17 | 36 | 0d |  |  |  |  |
| 38 | 2.2 | **Analysis ToBe** |  | 6d | 2019-12-18 | 2020-01-03 |  | 0d |  |  | 120h | 1,050 |
| 39 | 2.2.1 | Survey stakeholders |  | 2d | 2019-12-18 | 2019-12-19 | 37 | 0d |  | ISTRetail Project Manager | 16h |  |
| 40 | 2.2.2 | **Requirement Specification** |  | 3d | 2019-12-20 | 2020-01-02 |  | 0d |  |  | 88h | 1,050 |
| 41 | 2.2.2.1 | Functional |  | 1d | 2019-12-20 | 2019-12-20 | 39 | 0d |  | ISTRetail Project Manager; SID Director; Project Manager | 24h | 350 |
| 42 | 2.2.2.2 | Technical |  | 1d | 2019-12-23 | 2019-12-23 | 41 | 0d |  | ISTRetail Project Manager; Project Manager; IT Technical Coordinator; SID Director | 32h | 350 |
| 43 | 2.2.2.3 | Hardware |  | 1d | 2020-01-02 | 2020-01-02 | 42 | 0d |  | ISTRetail Project Manager; IT Technical Coordinator; SID Director; Project Manager | 32h | 350 |
| 44 | 2.2.3 | Approve requirements |  | 1d | 2020-01-03 | 2020-01-03 | 43 | 0d |  | ISTRetail Project Manager; Project Owner [50%]; SID Director [50%] | 16h |  |
| 45 | 2.2.4 | Analysis Approved | milestone | 0d | 2020-01-03 | 2020-01-03 | 44 | 0d |  |  |  |  |
| 46 | 3 | **Design** |  | 6d | 2020-01-06 | 2020-01-13 |  | 0d |  |  | 180h | 3,750 |
| 47 | 3.1 | **Design Interface** |  | 3d | 2020-01-06 | 2020-01-08 |  | 0d |  |  | 100h | 2,250 |
| 48 | 3.1.1 | Learn legacy system functionalities and behaviour |  | 1d | 2020-01-06 | 2020-01-06 | 45 | 0d |  | Technical Coordinator; Technical Consultant 1; Technical Consultant 2; Technical Trainee | 32h | 750 |
| 49 | 3.1.2 | Design an interface(protoype) that enables communication between framework and legacy system |  | 1d | 2020-01-07 | 2020-01-07 | 48 | 0d |  | Technical Consultant 2; Technical Consultant 1; Technical Trainee; Technical Coordinator | 32h | 750 |
| 50 | 3.1.3 | Receive feedback on the prototype |  | 1d | 2020-01-08 | 2020-01-08 | 49 | 0d |  | Technical Coordinator; IT Technical Coordinator [50%]; Technical Consultant 1 [50%] | 16h | 350 |
| 51 | 3.1.4 | Correct nonconformitites |  | 1d | 2020-01-08 | 2020-01-08 | 50FF | 0d |  | Technical Consultant 1 [50%]; Technical Trainee; Technical Consultant 2 | 20h | 400 |
| 52 | 3.1.5 | Interface Design Completed | milestone | 0d | 2020-01-08 | 2020-01-08 | 51 | 0d |  |  |  |  |

| ID | WBS | Task | Type | Duration | Start | Finish | Predecessors | Total slack | Free slack | Resources | Work | Cost |
| --- | --- | --- | --- | --- | --- | --- | --- | --- | --- | --- | --- | --- |
| 53 | 3.2 | **Test Specification** |  | 3d | 2020-01-09 | 2020-01-13 |  | 0d |  |  | 80h | 1,500 |
| 54 | 3.2.1 | Specify integration tests |  | 1d | 2020-01-09 | 2020-01-09 | 52 | 0d |  | Technical Coordinator [50%]; IT Technical Coordinator [50%]; Technical Consultant 1; Technical Trainee | 24h | 425 |
| 55 | 3.2.2 | Specify system tests |  | 1d | 2020-01-09 | 2020-01-09 | 54SS | 0d |  | Technical Coordinator [50%]; IT Technical Coordinator [50%]; Technical Consultant 2 | 16h | 325 |
| 56 | 3.2.3 | Specify acceptance tests |  | 1d | 2020-01-13 | 2020-01-13 | 55 | 0d |  | Technical Coordinator; HRD Delegate; Technical Consultant 1; Technical Consultant 2; Technical Trainee | 40h | 750 |
| 57 | 3.2.4 | Test Specification Completed | milestone | 0d | 2020-01-13 | 2020-01-13 | 56, 54 | 0d |  |  |  |  |
| 58 | 4 | **Realization** |  | 36d | 2020-01-14 | 2020-03-03 |  | 0d |  |  | 1952h | 46,400 |
| 59 | 4.1 | **Employees Register Module** |  | 5d | 2020-01-14 | 2020-01-20 |  | 1d |  |  | 160h | 3,750 |
| 60 | 4.1.1 | Parametrization |  | 1d | 2020-01-14 | 2020-01-14 | 57 | 1d | 0d | Technical Coordinator; Technical Consultant 1; Technical Consultant 2; Technical Trainee | 32h | 750 |
| 61 | 4.1.2 | Define profiles and respective privileges |  | 2d | 2020-01-15 | 2020-01-16 | 60 | 1d | 0d | Technical Coordinator; Technical Consultant 1; Technical Consultant 2; Technical Trainee | 64h | 1,500 |
| 62 | 4.1.3 | Fulfill requirements |  | 2d | 2020-01-17 | 2020-01-20 | 61 | 1d | 0d | Technical Coordinator; Technical Consultant 2; Technical Consultant 1; Technical Trainee | 64h | 1,500 |
| 63 | 4.1.4 | Employees Register Module completed | milestone | 0d | 2020-01-20 | 2020-01-20 | 62 | 1d | 0d |  |  |  |
| 64 | 4.2 | **Holidays and Absences Module** |  | 10d | 2020-01-21 | 2020-02-03 |  | 1d |  |  | 320h | 7,500 |
| 65 | 4.2.1 | Parametrization |  | 2d | 2020-01-21 | 2020-01-22 | 63 | 1d | 0d | Technical Coordinator; Technical Trainee; Technical Consultant 2; Technical Consultant 1 | 64h | 1,500 |
| 66 | 4.2.2 | Define profiles and respective privileges |  | 4d | 2020-01-23 | 2020-01-28 | 65 | 1d | 0d | Technical Coordinator; Technical Consultant 1; Technical Consultant 2; Technical Trainee | 128h | 3,000 |
| 67 | 4.2.3 | Fulfill requirements |  | 4d | 2020-01-29 | 2020-02-03 | 66 | 1d | 0d | Technical Coordinator; Technical Consultant 2; Technical Consultant 1; Technical Trainee | 128h | 3,000 |
| 68 | 4.2.4 | Holidays and absences Module completed | milestone | 0d | 2020-02-03 | 2020-02-03 | 67 | 1d | 0d |  |  |  |
| 69 | 4.3 | **Training Management Module** |  | 10d | 2020-02-04 | 2020-02-17 |  | 1d |  |  | 344h | 7,500 |
| 70 | 4.3.1 | Parametrization |  | 1d | 2020-02-04 | 2020-02-04 | 68 | 1d | 0d | Technical Coordinator; Technical Consultant 1; Technical Trainee; Technical Consultant 2 | 32h | 750 |
| 71 | 4.3.2 | Create scripts for data migration |  | 1d | 2020-02-05 | 2020-02-05 | 70 | 1d | 0d | Technical Coordinator; Technical Trainee; Technical Consultant 1; Technical Consultant 2 | 32h | 750 |
| 72 | 4.3.3 | Data Migration |  | 3d | 2020-02-06 | 2020-02-10 | 71 | 1d | 0d | Technical Trainee; Technical Coordinator; Technical Consultant 1; Technical Consultant 2; IT Specialist | 120h | 2,250 |
| 73 | 4.3.4 | Define profiles and respective privileges |  | 2d | 2020-02-11 | 2020-02-12 | 72 | 1d | 0d | Technical Coordinator; Technical Consultant 2; Technical Consultant 1; Technical Trainee | 64h | 1,500 |
| 74 | 4.3.5 | Fulfill requirements |  | 3d | 2020-02-13 | 2020-02-17 | 73 | 1d | 0d | Technical Coordinator; Technical Consultant 1; Technical Trainee; Technical Consultant 2 | 96h | 2,250 |
| 75 | 4.3.6 | Training Management Module completed | milestone | 0d | 2020-02-17 | 2020-02-17 | 74 | 1d | 0d |  |  |  |
| 76 | 4.4 | **Corporate Information Module** |  | 31d | 2020-01-14 | 2020-02-25 |  | 0d |  |  | 800h | 20,150 |
| 77 | 4.4.1 | Create backlog |  | 1d | 2020-01-14 | 2020-01-14 | 57 | 0d |  | Scrum Master; HRD Delegate; Scrum Consultant 1; Scrum Consultant 2 | 32h | 650 |

| ID | WBS | Task | Type | Duration | Start | Finish | Predecessors | Total slack | Free slack | Resources | Work | Cost |
| --- | --- | --- | --- | --- | --- | --- | --- | --- | --- | --- | --- | --- |
| 78 | 4.4.2 | **Sprint 1** |  | 10d | 2020-01-15 | 2020-01-28 |  | 0d |  |  | 256h | 6,500 |
| 79 | 4.4.2.1 | Plan |  | 1d | 2020-01-15 | 2020-01-15 | 77 | 0d |  | Scrum Master; HRD Delegate; Scrum Consultant 1; Scrum Consultant 2 | 32h | 650 |
| 80 | 4.4.2.2 | Execute work |  | 8d | 2020-01-16 | 2020-01-27 | 79 | 0d |  | Scrum Master; Scrum Consultant 2; Scrum Consultant 1 | 192h | 5,200 |
| 81 | 4.4.2.3 | Review |  | 1d | 2020-01-28 | 2020-01-28 | 80 | 0d |  | Scrum Master; Scrum Consultant 2; HRD Delegate; Scrum Consultant 1 | 32h | 650 |
| 82 | 4.4.2.4 | Sprint concluded | milestone | 0d | 2020-01-28 | 2020-01-28 | 81 | 0d |  |  |  |  |
| 83 | 4.4.3 | **Sprint 2** |  | 10d | 2020-01-29 | 2020-02-11 |  | 0d |  |  | 256h | 6,500 |
| 84 | 4.4.3.1 | Plan |  | 1d | 2020-01-29 | 2020-01-29 | 82 | 0d |  | HRD Delegate; Scrum Master; Scrum Consultant 1; Scrum Consultant 2 | 32h | 650 |
| 85 | 4.4.3.2 | Execute work |  | 8d | 2020-01-30 | 2020-02-10 | 84 | 0d |  | Scrum Master; Scrum Consultant 2; Scrum Consultant 1 | 192h | 5,200 |
| 86 | 4.4.3.3 | Review |  | 1d | 2020-02-11 | 2020-02-11 | 85 | 0d |  | HRD Delegate; Scrum Master; Scrum Consultant 1; Scrum Consultant 2 | 32h | 650 |
| 87 | 4.4.3.4 | Sprint concluded | milestone | 0d | 2020-02-11 | 2020-02-11 | 86 | 0d |  |  |  |  |
| 88 | 4.4.4 | **Sprint 3** |  | 10d | 2020-02-12 | 2020-02-25 |  | 0d |  |  | 256h | 6,500 |
| 89 | 4.4.4.1 | Plan |  | 1d | 2020-02-12 | 2020-02-12 | 87 | 0d |  | HRD Delegate; Scrum Master; Scrum Consultant 1; Scrum Consultant 2 | 32h | 650 |
| 90 | 4.4.4.2 | Execute work |  | 8d | 2020-02-13 | 2020-02-24 | 89 | 0d |  | Scrum Master; Scrum Consultant 1; Scrum Consultant 2 | 192h | 5,200 |
| 91 | 4.4.4.3 | Review |  | 1d | 2020-02-25 | 2020-02-25 | 90 | 0d |  | Scrum Consultant 1; Scrum Consultant 2; Scrum Master; HRD Delegate | 32h | 650 |
| 92 | 4.4.4.4 | Sprint concluded | milestone | 0d | 2020-02-25 | 2020-02-25 | 91 | 0d |  |  |  |  |
| 93 | 4.4.5 | Corporate Information Module completed | milestone | 0d | 2020-02-25 | 2020-02-25 | 92 | 0d |  |  |  |  |
| 94 | 4.5 | **Interface Implementation** |  | 5d | 2020-02-18 | 2020-02-24 |  | 1d |  |  | 168h | 3,750 |
| 95 | 4.5.1 | Implement the interface according to the requirements |  | 4d | 2020-02-18 | 2020-02-21 | 75 | 1d | 0d | Technical Coordinator; Technical Trainee; Technical Consultant 1; Technical Consultant 2 | 128h | 3,000 |
| 96 | 4.5.2 | Review interface |  | 1d | 2020-02-24 | 2020-02-24 | 95 | 1d | 0d | Technical Coordinator; IT Technical Coordinator; Technical Consultant 1; Technical Consultant 2; Technical Trainee | 40h | 750 |
| 97 | 4.5.3 | Interface implemented | milestone | 0d | 2020-02-24 | 2020-02-24 | 96 | 1d |  |  |  |  |
| 98 | 4.6 | **Integration Tests** |  | 5d | 2020-02-26 | 2020-03-03 |  | 0d |  |  | 160h | 3,750 |
| 99 | 4.6.1 | Execute Tests |  | 5d | 2020-02-26 | 2020-03-03 | 93, 75, 97 | 0d |  | Technical Coordinator; Technical Consultant 1 | 80h | 2,250 |
| 100 | 4.6.2 | Correct nonconformities |  | 5d | 2020-02-26 | 2020-03-03 | 99FF | 0d |  | Technical Consultant 2; Technical Trainee | 80h | 1,500 |
| 101 | 4.6.3 | Integration Tests Completed | milestone | 0d | 2020-03-03 | 2020-03-03 | 100 | 0d |  |  |  |  |

| ID | WBS | Task | Type | Duration | Start | Finish | Predecessors | Total slack | Resources | Work | Cost |
| --- | --- | --- | --- | --- | --- | --- | --- | --- | --- | --- | --- |
| 102 | 5 | **Transition** |  | 13d | 2020-03-04 | 2020-03-20 |  | 0d |  | 652h | 7,900 |
| 103 | 5.1 | **Training** |  | 1d | 2020-03-13 | 2020-03-13 |  | 0d |  | 16h | 400 |
| 104 | 5.1.1 | Train SID employees |  | 1d | 2020-03-13 | 2020-03-13 | 115 | 0d | Technical Consultant 1 [50%] | 4h | 100 |
| 105 | 5.1.2 | Train HRD employees |  | 1d | 2020-03-13 | 2020-03-13 | 104SS | 0d | Technical Consultant 2 [50%] | 4h | 100 |
| 106 | 5.1.3 | Provide technical documentation |  | 1d | 2020-03-13 | 2020-03-13 | 104SS, 105SS | 0d | Technical Consultant 1 [50%]; Technical Consultant 2 [50%] | 8h | 200 |
| 107 | 5.1.4 | Training completed | milestone | 0d | 2020-03-13 | 2020-03-13 | 106, 104, 105 | 0d |  |  |  |
| 108 | 5.2 | **Acceptance Tests** |  | 5d | 2020-03-16 | 2020-03-20 |  | 0d |  | 340h | 3,750 |
| 109 | 5.2.1 | Realize tests |  | 5d | 2020-03-16 | 2020-03-20 | 107 | 0d | HRD Specialist 1; Project Owner [50%]; HRD Specialist 2; HRD Specialist 3; HRD Delegate | 180h |  |
| 110 | 5.2.2 | Correct nonconformities |  | 5d | 2020-03-16 | 2020-03-20 | 109FF | 0d | Technical Consultant 1; Technical Consultant 2; Technical Trainee; Technical Coordinator | 160h | 3,750 |
| 111 | 5.2.3 | System accepted | milestone | 0d | 2020-03-20 | 2020-03-20 | 110 | 0d |  |  |  |
| 112 | 5.3 | **System Tests** |  | 5d | 2020-03-06 | 2020-03-12 |  | 0d |  | 240h | 3,750 |
| 113 | 5.3.1 | Execute tests |  | 5d | 2020-03-06 | 2020-03-12 | 119 | 0d | IT Trainee; IT Specialist | 80h |  |
| 114 | 5.3.2 | Correct nonconformities |  | 5d | 2020-03-06 | 2020-03-12 | 113FF | 0d | Technical Consultant 1; Technical Consultant 2; Technical Trainee; Technical Coordinator | 160h | 3,750 |
| 115 | 5.3.3 | System tests completed | milestone | 0d | 2020-03-12 | 2020-03-12 | 114 | 0d |  |  |  |
| 116 | 5.4 | **Software Installation** |  | 2d | 2020-03-04 | 2020-03-05 |  | 0d |  | 56h |  |
| 117 | 5.4.1 | Prepare all the necessary hardware |  | 1d | 2020-03-04 | 2020-03-04 | 101 | 0d | IT Technical Coordinator; IT Specialist; IT Trainee | 24h |  |
| 118 | 5.4.2 | Install all the required software for the information system to work properly |  | 1d | 2020-03-05 | 2020-03-05 | 117 | 0d | IT Technical Coordinator; IT Trainee; SID Director; IT Specialist | 32h |  |
| 119 | 5.4.3 | Software installed | milestone | 0d | 2020-03-05 | 2020-03-05 | 118 | 0d |  |  |  |
| 120 | 6 | **Operation** |  | 60d | 2020-03-23 | 2020-06-17 |  | 0d |  | 48h | 1,500 |
| 121 | 6.1 | **Warranty** |  | 60d | 2020-03-23 | 2020-06-17 |  | 0d |  | 48h | 1,500 |
| 122 | 6.1.1 | Correct problems or nonconformities that might appear |  | 60d | 2020-03-23 | 2020-06-17 | 111 | 0d | Technical Coordinator [10%] | 48h | 1,500 |
